# planificacion_desarrollo_software_proyecto_2007

Schedule from MS Project, 2016-04-04 to 2016-07-08, costs in Q, A marks actual dates.
Gestion de Proyectos
GPTR3
Planificación de proyecto para gestion de proyectos

## Calendars

- Estándar: Mon-Fri 09:00-13:00, 15:00-19:00; Sat-Sun off.

## Resources

| Resource | Group | Rate |
| --- | --- | --- |
| liliana Osorio | Base Datos | 93.75 |
| Marvin Illescas | Requerimientos | 93.75 |
| Juan Carlos Ramírez | Analisis | 93.75 |
| Romeo Muñoz | Proyectos | 93.75 |
| QA | Pruebas | 37.5 |
| QA2 | Pruebas | 18.75 |
| Diseñador | Diseño | 75 |
| Michael Asturias | CEO | 137.5 |
| Diseñador2 | Diseño | 50 |
| DBA2 | Base Datos | 68.75 |
| REQ2 | Requerimientos | 62.5 |
| PROYECTOS2 | Proyectos | 62.5 |
| ProgramadorJr | Desarrollo | 56.25 |
| ProgramadorJr2 | Desarrollo | 43.75 |
| ProgramadorSr | Desarrollo | 93.75 |
| ProgramadorSr2 | Desarrollo | 62.5 |

## Schedule

| ID | WBS | Task | Duration | Start | Finish | Predecessors | Complete | Remaining | Baseline start | Baseline finish | Baseline duration | Baseline 1 start | Baseline 1 finish | Total slack | Resources | Work | Actual work | Cost | Baseline cost | Actual cost |
| --- | --- | --- | --- | --- | --- | --- | --- | --- | --- | --- | --- | --- | --- | --- | --- | --- | --- | --- | --- | --- |
| 1 | 1 | **Sistema de Gestión de Proyectos** | 70d | 2016-04-04 A | 2016-07-08 |  | 71% | 20.18d | 2016-04-11 | 2016-04-21 | 8d | 2016-04-11 | 2016-04-21 | 0d |  | 856h | 558h | 74,800 | 6,850 | 49,162.5 |
| 2 | 1.1 | **Estrategia de Servicio** | 9d | 2016-04-04 A | 2016-04-14 A |  | 100% |  |  |  |  |  |  |  |  | 80h | 80h | 7,850 |  | 7,850 |
| 3 | 1.1.1 | Inicio de Proyecto | 1d | 2016-04-04 A | 2016-04-04 A |  | 100% |  |  |  |  |  |  |  | Michael Asturias | 8h | 8h | 1,100 |  | 1,100 |
| 4 | 1.1.2 | Constitución del proyecto | 3d | 2016-04-05 A | 2016-04-07 A | 3 | 100% |  |  |  |  |  |  |  | Romeo Muñoz | 24h | 24h | 2,250 |  | 2,250 |
| 5 | 1.1.3 | Definición de Visión del proyecto | 1d | 2016-04-05 A | 2016-04-05 A | 4SS | 100% |  |  |  |  |  |  |  | Marvin Illescas | 8h | 8h | 750 |  | 750 |
| 6 | 1.1.4 | Especificación Requisitos IEEE 830 | 5d | 2016-04-08 A | 2016-04-14 A | 4 | 100% |  |  |  |  |  |  |  | liliana Osorio | 40h | 40h | 3,750 |  | 3,750 |
| 7 | 1.2 | **Modelos de Negocio (Documentación)** | 13d | 2016-04-15 A | 2016-05-03 A |  | 100% |  |  |  |  |  |  |  |  | 104h | 104h | 9,750 |  | 9,750 |
| 8 | 1.2.1 | Documento de Casos de Uso | 3d | 2016-04-15 A | 2016-04-19 A | 6 | 100% |  |  |  |  |  |  |  | Marvin Illescas | 24h | 24h | 2,250 |  | 2,250 |
| 9 | 1.2.2 | Diagrama de Clases | 5d | 2016-04-20 A | 2016-04-26 A | 8 | 100% |  |  |  |  |  |  |  | Marvin Illescas | 40h | 40h | 3,750 |  | 3,750 |
| 10 | 1.2.3 | Factibilidad Técnica | 2d | 2016-04-27 A | 2016-04-28 A | 9 | 100% |  |  |  |  |  |  |  | Juan Carlos Ramírez | 16h | 16h | 1,500 |  | 1,500 |
| 11 | 1.2.4 | Factibilidad Economica | 2d | 2016-04-29 A | 2016-05-02 A | 10 | 100% |  |  |  |  |  |  |  | Juan Carlos Ramírez | 16h | 16h | 1,500 |  | 1,500 |
| 12 | 1.2.5 | Factibilidad Operativa | 1d | 2016-05-03 A | 2016-05-03 A | 11 | 100% |  |  |  |  |  |  |  | Juan Carlos Ramírez | 8h | 8h | 750 |  | 750 |
| 13 | 1.3 | **Diseño del servicio** | 29d | 2016-04-27 A | 2016-06-06 |  | 90% | 2.93d |  |  |  |  |  | 24d |  | 488h | 374h | 42,250 |  | 31,562.5 |
| 14 | 1.3.1 | **Creación de Flujo General** | 13d | 2016-04-27 A | 2016-05-13 A |  | 100% |  |  |  |  |  |  |  |  | 104h | 104h | 9,750 |  | 9,750 |
| 15 | 1.3.1.1 | Diagrama BPMN | 10d | 2016-04-27 A | 2016-05-10 A | 10SS | 100% |  |  |  |  |  |  |  | Romeo Muñoz | 80h | 80h | 7,500 |  | 7,500 |
| 16 | 1.3.1.2 | Analisis de Punto de Función | 2d | 2016-05-11 A | 2016-05-12 A | 15 | 100% |  |  |  |  |  |  |  | Romeo Muñoz | 16h | 16h | 1,500 |  | 1,500 |
| 17 | 1.3.1.3 | Análisis de Riesgos | 1d | 2016-05-13 A | 2016-05-13 A | 16 | 100% |  |  |  |  |  |  |  | Juan Carlos Ramírez | 8h | 8h | 750 |  | 750 |
| 18 | 1.3.2 | **Infraestructura** | 3d | 2016-04-29 A | 2016-05-03 A |  | 100% |  |  |  |  |  |  |  |  | 24h | 24h | 2,250 |  | 2,250 |
| 19 | 1.3.2.1 | Analisis de Factibilidad Técnica | 1d | 2016-04-29 A | 2016-04-29 A | 10 | 100% |  |  |  |  |  |  |  | Marvin Illescas | 8h | 8h | 750 |  | 750 |
| 20 | 1.3.2.2 | Nombrar servicio | 1d | 2016-05-02 A | 2016-05-02 A | 19 | 100% |  |  |  |  |  |  |  | Marvin Illescas | 8h | 8h | 750 |  | 750 |
| 21 | 1.3.2.3 | Presentar información de conexión | 1d | 2016-05-03 A | 2016-05-03 A | 20 | 100% |  |  |  |  |  |  |  | Marvin Illescas | 8h | 8h | 750 |  | 750 |
| 22 | 1.3.3 | **Creación Inicial Base Datos** | 5d | 2016-04-27 A | 2016-05-03 A |  | 100% |  |  |  |  |  |  |  |  | 40h | 40h | 3,750 |  | 3,750 |
| 23 | 1.3.3.1 | Modelo E-R | 3d | 2016-04-27 A | 2016-04-29 A | 10SS | 100% |  |  |  |  |  |  |  | liliana Osorio | 24h | 24h | 2,250 |  | 2,250 |
| 24 | 1.3.3.2 | Diseño Base Datos | 2d | 2016-05-02 A | 2016-05-03 A | 23 | 100% |  |  |  |  |  |  |  | liliana Osorio | 16h | 16h | 1,500 |  | 1,500 |

| ID | WBS | Task | Type | Duration | Start | Finish | Predecessors | Complete | Remaining | Total slack | Free slack | Constraint | Resources | Work | Actual work | Cost | Actual cost |
| --- | --- | --- | --- | --- | --- | --- | --- | --- | --- | --- | --- | --- | --- | --- | --- | --- | --- |
| 25 | 1.3.4 | **Diseño de Sistema** |  | 20d | 2016-05-04 A | 2016-05-31 A |  | 100% |  |  |  |  |  | 200h | 200h | 15,250 | 15,250 |
| 26 | 1.3.4.1 | Crear Conexiones a Base de datos |  | 1d | 2016-05-04 A | 2016-05-04 A | 24 | 100% |  |  |  |  | ProgramadorJr | 8h | 8h | 450 | 450 |
| 27 | 1.3.4.2 | Crear Seguridad por roles |  | 2d | 2016-05-05 A | 2016-05-06 A | 26 | 100% |  |  |  |  | ProgramadorSr | 16h | 16h | 1,500 | 1,500 |
| 28 | 1.3.4.3 | Crear Página de Login |  | 2d | 2016-05-09 A | 2016-05-10 A | 27 | 100% |  |  |  |  | ProgramadorJr | 16h | 16h | 900 | 900 |
| 29 | 1.3.4.4 | Crear Páginas de mantenimientos |  | 5d | 2016-05-11 A | 2016-05-17 A | 28 | 100% |  |  |  |  | ProgramadorSr | 40h | 40h | 3,750 | 3,750 |
| 30 | 1.3.4.5 | Crear Ingreso de Proyecto y detalles |  | 5d | 2016-05-11 A | 2016-05-17 A | 29SS | 100% |  |  |  |  | ProgramadorSr2 | 40h | 40h | 2,500 | 2,500 |
| 31 | 1.3.4.6 | Crear Reportes |  | 3d | 2016-05-18 A | 2016-05-20 A | 30 | 100% |  |  |  |  | Romeo Muñoz | 24h | 24h | 2,250 | 2,250 |
| 32 | 1.3.4.7 | Crear Reportes con Graficas |  | 2d | 2016-05-23 A | 2016-05-24 A | 31 | 100% |  |  |  |  | Romeo Muñoz | 16h | 16h | 1,500 | 1,500 |
| 33 | 1.3.4.8 | Rediseño visual del sistema |  | 3d | 2016-05-25 A | 2016-05-27 A | 32 | 100% |  |  |  |  | Diseñador | 24h | 24h | 1,800 | 1,800 |
| 34 | 1.3.4.9 | Realizar Pruebas |  | 2d | 2016-05-30 A | 2016-05-31 A | 33 | 100% |  |  |  |  | QA | 16h | 16h | 600 | 600 |
| 35 | 1.3.5 | **Manuales** |  | 3d | 2016-05-30 A | 2016-06-01 |  | 25% | 2.25d | 0d |  |  |  | 24h | 6h | 2,250 | 562.5 |
| 36 | 1.3.5.1 | Usuarios |  | 1d | 2016-05-30 A | 2016-05-30 | 34SS | 25% | 0.75d | 0.25d | 0d |  | Juan Carlos Ramírez | 8h | 2h | 750 | 187.5 |
| 37 | 1.3.5.2 | Soporte |  | 1d | 2016-05-31 A | 2016-05-31 | 36 | 25% | 0.75d | 0.25d | 0d |  | liliana Osorio | 8h | 2h | 750 | 187.5 |
| 38 | 1.3.5.3 | Técnico |  | 1d | 2016-06-01 A | 2016-06-01 | 37 | 25% | 0.75d | 0d |  |  | Marvin Illescas | 8h | 2h | 750 | 187.5 |
| 39 | 1.3.6 | **Pruebas** |  | 3d | 2016-06-02 | 2016-06-06 |  |  |  | 0d |  |  |  | 96h |  | 9,000 |  |
| 40 | 1.3.6.1 | Prototipo funcional del sistema |  | 1d | 2016-06-02 | 2016-06-02 | 38 |  |  | 0d |  |  | Juan Carlos Ramírez; liliana Osorio; Marvin Illescas; Romeo Muñoz | 32h |  | 3,000 |  |
| 41 | 1.3.6.2 | Presentación de Proyecto a Gerencia | milestone | 0d | 2016-06-04 | 2016-06-04 |  |  |  | 25d |  | start no earlier than 2016-06-04 | Juan Carlos Ramírez; liliana Osorio; Marvin Illescas; Romeo Muñoz |  |  |  |  |
| 42 | 1.3.6.3 | Servidor Test |  | 2d | 2016-06-03 | 2016-06-06 | 40 |  |  | 0d |  |  | Juan Carlos Ramírez; liliana Osorio; Marvin Illescas; Romeo Muñoz | 64h |  | 6,000 |  |
| 43 | 1.4 | **Transición de Servicios de TI** |  | 13d | 2016-06-07 | 2016-06-23 |  |  |  | 0d |  |  |  | 104h |  | 10,450 |  |
| 44 | 1.4.1 | Pruebas unitarias |  | 2d | 2016-06-07 | 2016-06-08 | 42 |  |  | 0d |  |  | Michael Asturias | 16h |  | 2,200 |  |
| 45 | 1.4.2 | Planear transición y soporte |  | 3d | 2016-06-09 | 2016-06-13 | 44 |  |  | 0d |  |  | Marvin Illescas | 24h |  | 2,250 |  |
| 46 | 1.4.3 | Liberación del servicio |  | 1d | 2016-06-14 | 2016-06-14 | 45 |  |  | 0d |  |  | Romeo Muñoz | 8h |  | 750 |  |
| 47 | 1.4.4 | **Entrenamiento** |  | 7d | 2016-06-15 | 2016-06-23 |  |  |  | 0d |  |  |  | 56h |  | 5,250 |  |
| 48 | 1.4.4.1 | Usuarios |  | 5d | 2016-06-15 | 2016-06-21 | 46 |  |  | 0d |  |  | liliana Osorio | 40h |  | 3,750 |  |
| 49 | 1.4.4.2 | Operaciones |  | 2d | 2016-06-22 | 2016-06-23 | 48 |  |  | 0d |  |  | Juan Carlos Ramírez | 16h |  | 1,500 |  |

| ID | WBS | Task | Duration | Start | Finish | Predecessors | Total slack | Resources | Work | Cost |
| --- | --- | --- | --- | --- | --- | --- | --- | --- | --- | --- |
| 50 | 1.5 | **Operaciones de Servicios de TI** | 11d | 2016-06-24 | 2016-07-08 |  | 0d |  | 80h | 4,500 |
| 51 | 1.5.1 | Soporte temprano | 10d | 2016-06-24 | 2016-07-08 | 49 | 0d | ProgramadorJr | 80h | 4,500 |
